# РК1

Schedule from MS Project, 2024-04-01 to 2024-07-16, costs in ₽.
Команда разработчиков из 16 человек занимается созданием карты города на основе собственного модуля отображения. Проект должен быть завершен в течение 6 месяцев. Бюджет проекта: 50 000 рублей.

## Calendars

- Стандартный: Mon-Fri 09:00-13:00, 14:00-18:00; Sat-Sun off. Exceptions (off unless hours are given): 2024-04-27 09:00-13:00, 14:00-18:00 (Рабочий день перед 1 мая), 2024-04-29 to 2024-05-01 (1 мая (Праздник Весны и Труда)), 2024-05-08 09:00-13:00, 14:00-17:00 (Сокращенный рабочий день перед 9 мая), 2024-05-09 to 2024-05-10 (9 мая (День Победы)), 2024-06-11 09:00-13:00, 14:00-17:00 (Сокращенный рабочий день перед 12 июня), 2024-06-12 (12 июня (День России)).

## Resources

| Resource | Group | Rate | Cost per use |
| --- | --- | --- | --- |
| Аналитик |  | 500 | 5000 |
| Ведущий программист | Программисты | 437.5 | 3000 |
| Программист 1 | Программисты | 312.5 | 2000 |
| Программист 2 | Программисты | 312.5 | 2000 |
| Программист 3 | Программисты | 312.5 | 2000 |
| Технический писатель |  | 250 | 1500 |
| Наборщики данных | Технический персонал | 218.75 | 1000 |
| Сервер базы данных | Оборудование | 25000 | 10000 |
| Картриджи для принтера | Расходные материалы | 2500 |  |
| Бумага | Расходные материалы | 200 |  |
| Специалист для проведения профилактических работ |  |  | 3000 |

## Schedule

| ID | WBS | Task | Type | Duration | Start | Finish | Predecessors | Baseline start | Baseline finish | Baseline duration | Total slack | Free slack | Constraint | Resources | Work | Cost | Baseline cost |
| --- | --- | --- | --- | --- | --- | --- | --- | --- | --- | --- | --- | --- | --- | --- | --- | --- | --- |
| 1 | 1 | Начало реализации проекта | milestone | 0d | 2024-04-01 09:00 | 2024-04-01 09:00 |  | 2024-04-01 09:00 | 2024-04-01 09:00 | 0d | 0.62d | 0d |  |  |  |  |  |
| 2 | 2 | **Программирование** |  | 33.75d | 2024-04-02 09:00 | 2024-05-23 17:00 |  | 2024-04-02 09:00 | 2024-05-23 17:00 | 33.75d | 0.62d |  |  | Сервер базы данных | 912h | 364,437.5 | 364,437.5 |
| 3 | 2.1 | Постановка задачи |  | 5d | 2024-04-02 09:00 | 2024-04-08 18:00 | 1FS+1d | 2024-04-02 09:00 | 2024-04-08 18:00 | 5d | 0.62d | 0d |  | Аналитик; Ведущий программист | 80h | 45,500 | 45,500 |
| 4 | 2.2 | Разработка интерфейса |  | 10d | 2024-04-09 09:00 | 2024-04-22 18:00 | 3 | 2024-04-09 09:00 | 2024-04-22 18:00 | 10d | 4d | 0d |  | Ведущий программист; Программист 1 | 160h | 65,000 | 65,000 |
| 5 | 2.3 | Разработка модулей обработки данных |  | 15d | 2024-04-23 12:00 | 2024-05-20 17:00 | 4 | 2024-04-23 12:00 | 2024-05-20 17:00 | 15d | 3.62d | 3d |  | Программист 2; Программист 3 | 240h | 79,000 | 79,000 |
| 6 | 2.4 | Разработка базы данных |  | 15d | 2024-04-09 09:00 | 2024-05-02 18:00 | 3 | 2024-04-09 09:00 | 2024-05-02 18:00 | 15d | 0.62d | 0d |  | Аналитик; Программист 1; Программист 2; Программист 3 | 240h | 94,437.5 | 94,437.5 |
| 7 | 2.5 | Заполнение базы данных |  | 12d | 2024-05-03 09:00 | 2024-05-23 17:00 | 6 | 2024-05-03 09:00 | 2024-05-23 17:00 | 12d | 0.62d | 0d |  | Наборщики данных [200%] | 192h | 44,000 | 44,000 |
| 8 | 3 | Программирование завершено | milestone | 0d | 2024-05-23 17:00 | 2024-05-23 17:00 | 5, 7 | 2024-05-23 17:00 | 2024-05-23 17:00 | 0d | 0.62d | 0d |  |  |  |  |  |
| 9 | 4 | **Тестирование и отладка** |  | 23.5d | 2024-05-16 17:00 | 2024-06-20 13:00 |  | 2024-05-16 17:00 | 2024-06-20 13:00 | 23.5d | 17.88d |  |  |  | 320h | 125,000 | 125,000 |
| 10 | 4.1 | Подготовка тестовых наборов данных |  | 7.38d | 2024-05-16 17:00 | 2024-05-28 15:00 | 8FS-5d | 2024-05-16 17:00 | 2024-05-28 15:00 | 7.38d | 17.88d | 0d |  | Программист 1; Программист 3 | 80h | 29,000 | 29,000 |
| 11 | 4.2 | Тестирование и исправление ошибок |  | 15d | 2024-05-28 15:00 | 2024-06-20 13:00 | 10 | 2024-05-28 15:00 | 2024-06-20 13:00 | 15d | 17.88d | 0d |  | Ведущий программист; Программист 2 | 240h | 95,000 | 95,000 |
| 12 | 5 | Отладка завершена | milestone | 0d | 2024-06-20 13:00 | 2024-06-20 13:00 | 11 | 2024-06-20 13:00 | 2024-06-20 13:00 | 0d | 17.88d | 25.12d |  |  |  |  |  |
| 13 | 6 | **Разработка документации** |  | 25.75d | 2024-06-06 17:00 | 2024-07-15 16:00 |  | 2024-06-06 17:00 | 2024-07-15 16:00 | 25.75d | 0.62d |  |  | Бумага [0.6%]; Картриджи для принтера [1.2%] | 200h | 59,695 | 59,695 |
| 14 | 6.1 | Составление программной документации |  | 10d | 2024-06-06 17:00 | 2024-06-24 12:00 | 8SS+10d | 2024-06-06 17:00 | 2024-06-24 12:00 | 10d | 0.62d | 0d |  | Технический писатель | 80h | 21,500 | 21,500 |
| 15 | 6.2 | Составление пользовательской документации |  | 15d | 2024-06-24 12:00 | 2024-07-15 16:00 | 14 | 2024-06-24 12:00 | 2024-07-15 16:00 | 15d | 0.62d | 0d |  | Технический писатель | 120h | 31,500 | 31,500 |
| 16 | 7 | Конец проекта | milestone | 0d | 2024-07-15 16:00 | 2024-07-15 16:00 | 15 | 2024-07-15 16:00 | 2024-07-15 16:00 | 0d | 0.62d |  |  |  |  |  |  |
| 17 | 8 | **Профилактика оборудования** |  | 55.12d | 2024-04-23 09:00 | 2024-07-16 12:00 |  | 2024-04-23 09:00 | 2024-07-16 12:00 | 55.12d | 0d |  |  |  | 147h | 21,000 | 21,000 |
| 18 | 8.1 | Профилактика оборудования 1 |  | 3h | 2024-04-23 09:00 | 2024-04-23 12:00 |  | 2024-04-23 09:00 | 2024-04-23 12:00 | 3h | 54.75d |  | start no earlier than 2024-04-23 09:00 | Аналитик; Ведущий программист; Наборщики данных; Программист 1; Программист 2; Программист 3; Специалист для проведения профилактических работ; Технический писатель | 21h | 3,000 | 3,000 |
| 19 | 8.2 | Профилактика оборудования 2 |  | 3h | 2024-05-07 09:00 | 2024-05-07 12:00 |  | 2024-05-07 09:00 | 2024-05-07 12:00 | 3h | 46.75d |  | start no earlier than 2024-05-07 09:00 | Аналитик; Ведущий программист; Наборщики данных; Программист 1; Программист 2; Программист 3; Специалист для проведения профилактических работ; Технический писатель | 21h | 3,000 | 3,000 |
| 20 | 8.3 | Профилактика оборудования 3 |  | 3h | 2024-05-21 09:00 | 2024-05-21 12:00 |  | 2024-05-21 09:00 | 2024-05-21 12:00 | 3h | 38.88d |  | start no earlier than 2024-05-21 09:00 | Аналитик; Ведущий программист; Наборщики данных; Программист 1; Программист 2; Программист 3; Специалист для проведения профилактических работ; Технический писатель | 21h | 3,000 | 3,000 |
| 21 | 8.4 | Профилактика оборудования 4 |  | 3h | 2024-06-04 09:00 | 2024-06-04 12:00 |  | 2024-06-04 09:00 | 2024-06-04 12:00 | 3h | 28.88d |  | start no earlier than 2024-06-04 09:00 | Аналитик; Ведущий программист; Наборщики данных; Программист 1; Программист 2; Программист 3; Специалист для проведения профилактических работ; Технический писатель | 21h | 3,000 | 3,000 |
| 22 | 8.5 | Профилактика оборудования 5 |  | 3h | 2024-06-18 09:00 | 2024-06-18 12:00 |  | 2024-06-18 09:00 | 2024-06-18 12:00 | 3h | 20d |  | start no earlier than 2024-06-18 09:00 | Аналитик; Ведущий программист; Наборщики данных; Программист 1; Программист 2; Программист 3; Специалист для проведения профилактических работ; Технический писатель | 21h | 3,000 | 3,000 |
| 23 | 8.6 | Профилактика оборудования 6 |  | 3h | 2024-07-02 09:00 | 2024-07-02 12:00 |  | 2024-07-02 09:00 | 2024-07-02 12:00 | 3h | 10d |  | start no earlier than 2024-07-02 09:00 | Аналитик; Ведущий программист; Наборщики данных; Программист 1; Программист 2; Программист 3; Специалист для проведения профилактических работ; Технический писатель | 21h | 3,000 | 3,000 |
| 24 | 8.7 | Профилактика оборудования 7 |  | 3h | 2024-07-16 09:00 | 2024-07-16 12:00 |  | 2024-07-16 09:00 | 2024-07-16 12:00 | 3h | 0d |  | start no earlier than 2024-07-16 09:00 | Аналитик; Ведущий программист; Наборщики данных; Программист 1; Программист 2; Программист 3; Специалист для проведения профилактических работ; Технический писатель | 21h | 3,000 | 3,000 |
